Schedule from MS Project, 2022-09-27 to 2022-12-23, costs in $, A marks actual dates.

## Calendars

- Standard: Mon-Fri 08:00-12:00, 13:00-17:00; Sat-Sun off.

## Resources

| Resource | Unit | Rate |
| --- | --- | --- |
| Nguyễn Thành Long |  | 30 |
| Trần Anh Quân |  | 30 |
| Lê Thanh An |  | 30 |
| Nguyễn Trần Hoàng |  | 30 |
| Mạch Microbit | Microbit | 80 |
| Cảm biến ánh sáng | Light Sensors | 50 |
| Cảm biến nhiệt độ | Temperature Sensors | 50 |
| Cảm biến độ ẩm | Humidity Sensors | 50 |
| Công tắc | Switch | 10 |
| Máy bơm | Pump | 100 |

## Schedule

| ID | WBS | Task | Type | Duration | Start | Finish | Predecessors | Complete | Remaining | Actual start | Baseline start | Baseline finish | Baseline duration | Total slack | Free slack | Constraint | Resources | Work | Actual work | Cost | Baseline cost | Actual cost |
| --- | --- | --- | --- | --- | --- | --- | --- | --- | --- | --- | --- | --- | --- | --- | --- | --- | --- | --- | --- | --- | --- | --- |
| 1 | 1 | **Xây dựng thông tin phần mềm** |  | 64d | 2022-09-27 08:00 A | 2022-12-23 17:00 |  | 13% | 55.5d |  | 2022-09-27 08:00 | 2022-12-23 17:00 | 64d |  |  |  |  | 2140h | 276.99h | 60,600 | 50,880 | 25,950 |
| 2 | 1.1 | Quản lý dự án | manual | 25d | 2022-09-27 08:00 A | 2022-10-31 17:00 |  | 37% | 15.85d |  | 2022-09-27 08:00 | 2022-09-27 08:00 | 0d |  |  |  | Nguyễn Thành Long | 235h | 86h | 7,050 |  | 7,050 |
| 3 | 1.2 | **Họp đinh kỳ hằng tuần** |  | 56d | 2022-10-03 08:00 | 2022-12-19 17:00 |  | 33% | 37.33d | 2022-10-03 09:00 | 2022-10-03 08:00 | 2022-12-19 17:00 | 56d |  |  |  |  | 120h | 40h |  |  |  |
| 4 | 1.2.1 | Họp đinh kỳ hằng tuần 1 | manual | 1h | 2022-10-03 09:00 A | 2022-10-03 10:00 A |  | 100% |  |  | 2022-10-03 09:00 | 2022-10-03 10:00 | 1h |  |  | start no earlier than 2022-10-03 08:00 |  | 10h | 10h |  |  |  |
| 5 | 1.2.2 | Họp đinh kỳ hằng tuần 2 | manual | 1h | 2022-10-10 09:00 A | 2022-10-10 10:00 A |  | 100% |  |  | 2022-10-10 09:00 | 2022-10-10 10:00 | 1h |  |  | start no earlier than 2022-10-10 08:00 |  | 10h | 10h |  |  |  |
| 6 | 1.2.3 | Họp đinh kỳ hằng tuần 3 | manual | 1h | 2022-10-17 13:00 A | 2022-10-17 14:00 A |  | 100% |  |  | 2022-10-17 13:00 | 2022-10-17 14:00 | 1h |  |  | start no earlier than 2022-10-17 08:00 |  | 10h | 10h |  |  |  |
| 7 | 1.2.4 | Họp đinh kỳ hằng tuần 4 | manual | 1h | 2022-10-24 09:00 A | 2022-10-24 10:00 A |  | 100% |  |  | 2022-10-24 09:00 | 2022-10-24 10:00 | 1h |  |  | start no earlier than 2022-10-24 08:00 |  | 10h | 10h |  |  |  |
| 8 | 1.2.5 | Họp đinh kỳ hằng tuần 5 | manual | 1h | 2022-10-31 09:00 | 2022-10-31 10:00 |  |  |  |  | 2022-10-31 09:00 | 2022-10-31 10:00 | 1h |  |  | start no earlier than 2022-10-31 08:00 |  | 10h |  |  |  |  |
| 9 | 1.2.6 | Họp đinh kỳ hằng tuần 6 | manual | 1h | 2022-11-07 09:00 | 2022-11-07 10:00 |  |  |  |  | 2022-11-07 09:00 | 2022-11-07 10:00 | 1h |  |  | start no earlier than 2022-11-07 08:00 |  | 10h |  |  |  |  |
| 10 | 1.2.7 | Họp đinh kỳ hằng tuần 7 | manual | 1h | 2022-11-14 09:00 | 2022-11-14 10:00 |  |  |  |  | 2022-11-14 09:00 | 2022-11-14 10:00 | 1h |  |  | start no earlier than 2022-11-14 08:00 |  | 10h |  |  |  |  |
| 11 | 1.2.8 | Họp đinh kỳ hằng tuần 8 | manual | 1h | 2022-11-21 09:00 | 2022-11-21 10:00 |  |  |  |  | 2022-11-21 09:00 | 2022-11-21 10:00 | 1h |  |  | start no earlier than 2022-11-21 08:00 |  | 10h |  |  |  |  |
| 12 | 1.2.9 | Họp đinh kỳ hằng tuần 9 | manual | 1h | 2022-11-28 09:00 | 2022-11-28 10:00 |  |  |  |  | 2022-11-28 09:00 | 2022-11-28 10:00 | 1h |  |  | start no earlier than 2022-11-28 08:00 |  | 10h |  |  |  |  |
| 13 | 1.2.10 | Họp đinh kỳ hằng tuần 10 | manual | 1h | 2022-12-05 09:00 | 2022-12-05 10:00 |  |  |  |  | 2022-12-05 09:00 | 2022-12-05 10:00 | 1h |  |  | start no earlier than 2022-12-05 08:00 |  | 10h |  |  |  |  |
| 14 | 1.2.11 | Họp đinh kỳ hằng tuần 11 | manual | 1h | 2022-12-12 09:00 | 2022-12-12 10:00 |  |  |  |  | 2022-12-12 09:00 | 2022-12-12 10:00 | 1h |  |  | start no earlier than 2022-12-12 08:00 |  | 10h |  |  |  |  |
| 15 | 1.2.12 | Họp đinh kỳ hằng tuần 12 | manual | 1h | 2022-12-19 09:00 | 2022-12-19 10:00 |  |  |  |  | 2022-12-19 09:00 | 2022-12-19 10:00 | 1h |  |  | start no earlier than 2022-12-19 08:00 |  | 10h |  |  |  |  |
| 16 | 1.3 | **Khảo sát và phân tích** |  | 18d | 2022-09-27 08:00 A | 2022-10-20 17:00 |  | 24% | 13.69d |  | 2022-09-27 08:00 | 2022-10-20 17:00 | 18d |  |  |  |  | 630h | 150.99h | 18,900 | 17,280 | 18,900 |
| 17 | 1.3.1 | **Khảo sát hiện trạng** |  | 7d | 2022-09-27 08:00 A | 2022-10-05 17:00 |  | 34% | 4.59d |  | 2022-09-27 08:00 | 2022-10-04 17:00 | 6d |  |  |  |  | 192h | 66h | 5,760 | 5,760 | 5,760 |
| 18 | 1.3.1.1 | Xây dựng nội dung |  | 2d | 2022-09-27 08:00 A | 2022-09-28 17:00 |  | 34% | 1.31d |  | 2022-09-27 08:00 | 2022-09-28 17:00 | 2d | 0.72d | 0d | finish no earlier than 2022-09-28 17:00 | Lê Thanh An; Nguyễn Thành Long; Nguyễn Trần Hoàng; Trần Anh Quân | 64h | 22h | 1,920 | 1,920 | 1,920 |
| 19 | 1.3.1.2 | Khảo sát mô hình nông trại |  | 2d | 2022-09-29 08:00 A | 2022-09-30 17:00 | 18 | 36% | 1.28d |  | 2022-09-29 08:00 | 2022-09-30 17:00 | 2d | 0.66d | 0d |  | Lê Thanh An; Nguyễn Thành Long; Nguyễn Trần Hoàng; Trần Anh Quân | 64h | 23h | 1,920 | 1,920 | 1,920 |
| 20 | 1.3.1.3 | Xác định các đối tượng |  | 2d | 2022-10-03 08:00 A | 2022-10-04 17:00 | 19 | 33% | 1.34d |  | 2022-10-03 08:00 | 2022-10-04 17:00 | 2d | 0.94d | 0d |  | Lê Thanh An; Nguyễn Thành Long; Nguyễn Trần Hoàng; Trần Anh Quân | 64h | 21h | 1,920 | 1,920 | 1,920 |
| 21 | 1.3.2 | **Tổ chức thực hiện** |  | 6d | 2022-10-05 08:00 A | 2022-10-12 17:00 |  | 32% | 4.09d |  | 2022-10-05 08:00 | 2022-10-12 17:00 | 6d |  |  |  |  | 192h | 61h | 5,760 | 5,760 | 5,760 |
| 22 | 1.3.2.1 | Xây dựng sơ đồ lắp đặt thiết bị Iot | manual | 3d | 2022-10-05 08:00 A | 2022-10-07 17:00 | 20 | 31% | 2.06d |  | 2022-10-05 08:00 | 2022-10-07 17:00 | 3d |  |  |  | Lê Thanh An; Nguyễn Thành Long; Nguyễn Trần Hoàng; Trần Anh Quân | 96h | 30h | 2,880 | 2,880 | 2,880 |
| 23 | 1.3.2.2 | Phân tích thiết kế | manual | 3d | 2022-10-10 08:00 A | 2022-10-12 17:00 | 22 | 32% | 2.03d |  | 2022-10-10 08:00 | 2022-10-12 17:00 | 3d |  |  |  | Lê Thanh An; Nguyễn Thành Long; Nguyễn Trần Hoàng; Trần Anh Quân | 96h | 31h | 2,880 | 2,880 | 2,880 |
| 24 | 1.3.3 | **Kiểm tra** |  | 6d | 2022-10-13 08:00 A | 2022-10-20 17:00 |  | 10% | 5.41d |  | 2022-10-13 08:00 | 2022-10-20 17:00 | 6d |  |  |  |  | 246h | 23.99h | 7,380 | 5,760 | 7,380 |
| 25 | 1.3.3.1 | Kiểm tra sơ đồ lắp đặt thiết bị IoT |  | 4.69d | 2022-10-13 08:00 A | 2022-10-19 14:30 | 23 | 8% | 4.31d |  | 2022-10-13 08:00 | 2022-10-17 17:00 | 3d | 0.38d | 0d |  | Lê Thanh An; Nguyễn Thành Long; Nguyễn Trần Hoàng; Trần Anh Quân | 150h | 11.99h | 4,500 | 2,880 | 4,500 |
| 26 | 1.3.3.2 | Kiểm tra phân tích thiết kế |  | 3d | 2022-10-19 14:30 A | 2022-10-24 14:30 | 25 | 13% | 2.62d |  | 2022-10-18 08:00 | 2022-10-20 17:00 | 3d | 0.31d | 0d |  | Lê Thanh An; Nguyễn Thành Long; Nguyễn Trần Hoàng; Trần Anh Quân | 96h | 12h | 2,880 | 2,880 | 2,880 |

| ID | WBS | Task | Type | Duration | Start | Finish | Predecessors | Baseline start | Baseline finish | Baseline duration | Resources | Work | Cost | Baseline cost |
| --- | --- | --- | --- | --- | --- | --- | --- | --- | --- | --- | --- | --- | --- | --- |
| 27 | 1.4 | **Xây dựng hệ thống phần mềm** |  | 44d | 2022-10-21 08:00 | 2022-12-21 17:00 |  | 2022-10-21 08:00 | 2022-12-21 17:00 | 44d |  | 1155h | 34,650 | 33,600 |
| 28 | 1.4.1 | **Đặc tả hệ thống** |  | 8d | 2022-10-21 08:00 | 2022-11-01 17:00 |  | 2022-10-21 08:00 | 2022-11-01 17:00 | 8d |  | 263h | 7,890 | 7,680 |
| 29 | 1.4.1.1 | Vẽ lược đồ kiến trúc hệ thống | manual | 8d | 2022-10-21 08:00 | 2022-11-01 17:00 | 26 | 2022-10-21 08:00 | 2022-11-01 17:00 | 8d | Lê Thanh An; Nguyễn Thành Long | 135h | 4,050 | 3,840 |
| 30 | 1.4.1.2 | Thiết kế giao diện | manual | 8d | 2022-10-21 08:00 | 2022-11-01 17:00 | 26 | 2022-10-21 08:00 | 2022-11-01 17:00 | 8d | Nguyễn Trần Hoàng; Trần Anh Quân | 128h | 3,840 | 3,840 |
| 31 | 1.4.2 | Lập trình cơ sở | manual | 4d | 2022-11-02 08:00 | 2022-11-07 17:00 | 30, 29 | 2022-11-02 08:00 | 2022-11-07 17:00 | 4d | Lê Thanh An; Nguyễn Thành Long; Nguyễn Trần Hoàng; Trần Anh Quân | 128h | 3,840 | 3,840 |
| 32 | 1.4.3 | **Lập trình chi tiết** |  | 22d | 2022-11-08 08:00 | 2022-12-07 17:00 |  | 2022-11-08 08:00 | 2022-12-07 17:00 | 22d |  | 444h | 13,320 | 12,480 |
| 33 | 1.4.3.1 | **Lập trình frontend** |  | 10d | 2022-11-08 08:00 | 2022-11-21 17:00 |  | 2022-11-08 08:00 | 2022-11-21 17:00 | 10d |  | 80h | 2,400 | 2,400 |
| 34 | 1.4.3.1.1 | UI toggle bật tắt máy bơm | manual | 1d | 2022-11-08 08:00 | 2022-11-08 17:00 | 31 | 2022-11-08 08:00 | 2022-11-08 17:00 | 1d | Lê Thanh An | 8h | 240 | 240 |
| 35 | 1.4.3.1.2 | UI toggle bật tắt máy bơm | manual | 1d | 2022-11-09 08:00 | 2022-11-09 17:00 | 34 | 2022-11-09 08:00 | 2022-11-09 17:00 | 1d | Nguyễn Thành Long | 8h | 240 | 240 |
| 36 | 1.4.3.1.3 | UI hiển thị thông tin nhiệt độ, độ ẩm | manual | 2d | 2022-11-10 08:00 | 2022-11-11 17:00 | 35 | 2022-11-10 08:00 | 2022-11-11 17:00 | 2d | Lê Thanh An | 16h | 480 | 480 |
| 37 | 1.4.3.1.4 | UI cảnh báo nhiệt độ vượt ngưỡng | manual | 2d | 2022-11-14 08:00 | 2022-11-15 17:00 | 36 | 2022-11-14 08:00 | 2022-11-15 17:00 | 2d | Nguyễn Thành Long | 16h | 480 | 480 |
| 38 | 1.4.3.1.5 | UI lịch sử hệ thống | manual | 2d | 2022-11-16 08:00 | 2022-11-17 17:00 | 37 | 2022-11-16 08:00 | 2022-11-17 17:00 | 2d | Lê Thanh An | 16h | 480 | 480 |
| 39 | 1.4.3.1.6 | UI đặt lịch bơm nước | manual | 2d | 2022-11-18 08:00 | 2022-11-21 17:00 | 38 | 2022-11-18 08:00 | 2022-11-21 17:00 | 2d | Nguyễn Thành Long | 16h | 480 | 480 |
| 40 | 1.4.3.2 | **Lập trình backend** |  | 10d | 2022-11-08 08:00 | 2022-11-21 17:00 |  | 2022-11-08 08:00 | 2022-11-21 17:00 | 10d |  | 104h | 3,120 | 2,400 |
| 41 | 1.4.3.2.1 | API lấy lịch sử hệ thống | manual | 2d | 2022-11-08 08:00 | 2022-11-09 17:00 | 31 | 2022-11-08 08:00 | 2022-11-09 17:00 | 2d | Nguyễn Trần Hoàng | 21h | 630 | 480 |
| 42 | 1.4.3.2.2 | API lấy lịch bơm nước | manual | 2d | 2022-11-10 08:00 | 2022-11-11 17:00 | 41 | 2022-11-10 08:00 | 2022-11-11 17:00 | 2d | Trần Anh Quân | 31h | 930 | 480 |
| 43 | 1.4.3.2.3 | API lưu thông tin nhiệt độ, độ ẩm | manual | 3d | 2022-11-14 08:00 | 2022-11-16 17:00 | 42 | 2022-11-14 08:00 | 2022-11-16 17:00 | 3d | Nguyễn Trần Hoàng | 24h | 720 | 720 |
| 44 | 1.4.3.2.4 | API lấy cảnh báo nhiệt độ vượt ngưỡng | manual | 3d | 2022-11-17 08:00 | 2022-11-21 17:00 | 43 | 2022-11-17 08:00 | 2022-11-21 17:00 | 3d | Trần Anh Quân | 28h | 840 | 720 |
| 45 | 1.4.3.3 | Lập trình microbit | manual | 4d | 2022-11-22 08:00 | 2022-11-25 17:00 | 39, 44 | 2022-11-22 08:00 | 2022-11-25 17:00 | 4d | Lê Thanh An; Trần Anh Quân | 68h | 2,040 | 1,920 |
| 46 | 1.4.3.4 | Kết nối thiết bị IoT | manual | 4d | 2022-11-28 08:00 | 2022-12-01 17:00 | 45 | 2022-11-28 08:00 | 2022-12-01 17:00 | 4d | Nguyễn Thành Long; Nguyễn Trần Hoàng | 64h | 1,920 | 1,920 |
| 47 | 1.4.3.5 | Hiện thực IoT Gateway | manual | 4d | 2022-12-02 08:00 | 2022-12-07 17:00 | 46 | 2022-12-02 08:00 | 2022-12-07 17:00 | 4d | Lê Thanh An; Nguyễn Thành Long; Nguyễn Trần Hoàng; Trần Anh Quân | 128h | 3,840 | 3,840 |
| 48 | 1.4.4 | Kiểm thử hệ thống | manual | 6d | 2022-12-08 08:00 | 2022-12-15 17:00 | 47 | 2022-12-08 08:00 | 2022-12-15 17:00 | 6d | Lê Thanh An; Nguyễn Thành Long; Nguyễn Trần Hoàng; Trần Anh Quân | 192h | 5,760 | 5,760 |
| 49 | 1.4.5 | Deploy hệ thống | manual | 4d | 2022-12-16 08:00 | 2022-12-21 17:00 | 48 | 2022-12-16 08:00 | 2022-12-21 17:00 | 4d | Lê Thanh An; Nguyễn Thành Long; Nguyễn Trần Hoàng; Trần Anh Quân | 128h | 3,840 | 3,840 |
